# Projekat-USP

Schedule from MS Project, 2019-05-01 to 2022-05-02, costs in €.

## Calendars

- Standard: Mon-Fri 08:00-12:00, 13:00-17:00; Sat-Sun off.

## Resources

| Resource | Group | Rate | Cost per use |
| --- | --- | --- | --- |
| KI - Istraživač1 | KI | 46.25 |  |
| KI - Administrator1 | KI | 41.75 |  |
| KI - Menadžer1 | KI | 48.12 |  |
| KI - Menadžer2 | KI | 48.12 |  |
| KI - Istraživač2 | KI | 46.25 |  |
| KI - Administrator2 | KI | 41.75 |  |
| KI - PostDoc | KI | 46.25 |  |
| UC - Tehničar | UC | 40.12 |  |
| UC - Menadžer | UC | 46.38 |  |
| UC - PostDoc1 | UC | 44.75 |  |
| UC - PostDoc2 | UC | 44.75 |  |
| UC - PhDStudent1 | UC | 36.75 |  |
| UC - PhDStudent2 | UC | 36.75 |  |
| KI - Menadžer3 | KI | 48.12 |  |
| PHILIPS - Administrator | PHILIPS | 36.75 |  |
| PHILIPS - PhDStudent1 | PHILIPS | 36.75 |  |
| PHILIPS - PhDStudent2 | PHILIPS | 36.75 |  |
| PHILIPS - PostDoc1 | PHILIPS | 44.75 |  |
| PHILIPS - PostDoc2 | PHILIPS | 44.75 |  |
| PHILIPS - Tehničar1 | PHILIPS | 40.12 |  |
| PHILIPS - Tehničar2 | PHILIPS | 40.12 |  |
| PHILIPS - Istraživač | PHILIPS | 44.75 |  |
| ETF - Administrator1 | ETF | 41.75 |  |
| ETF - Administrator2 | ETF | 41.75 |  |
| ETF - Istraživač1 | ETF | 46.25 |  |
| ETF - Istraživač2 | ETF | 46.25 |  |
| ETF - Menadžer1 | ETF | 48.12 |  |
| ETF - Menadžer2 | ETF | 48.12 |  |
| ETF - Menadžer3 | ETF | 48.12 |  |
| ETF - PostDoc1 | ETF | 46.25 |  |
| ETF - PostDoc2 | ETF | 46.25 |  |
| ETF - PostDoc3 | ETF | 46.25 |  |
| ETF - PhDStudent1 | ETF | 36.75 |  |
| ETF - PhDStudent2 | ETF | 36.75 |  |
| ETF - PhDStudent3 | ETF | 36.75 |  |
| ETH - Administrator1 | ETH | 41.75 |  |
| ETH - Administrator2 | ETH | 41.75 |  |
| ETH - Istraživač1 | ETH | 46.25 |  |
| ETH - Istraživač2 | ETH | 46.25 |  |
| ETH - Menadžer1 | ETH | 48.12 |  |
| ETH - Menadžer2 | ETH | 48.12 |  |
| ETH - Menadžer3 | ETH | 48.12 |  |
| ETH - PhDStudent1 | ETH | 36.75 |  |
| ETH - PhDStudent2 | ETH | 36.75 |  |
| ETH - PhDStudent3 | ETH | 36.75 |  |
| ETH - PostDoc1 | ETH | 46.25 |  |
| ETH - PostDoc2 | ETH | 46.25 |  |
| ETH - PostDoc3 | ETH | 46.25 |  |
| SIEMENS - Administrator1 | SIEMENS | 41.75 |  |
| SIEMENS - Administrator2 | SIEMENS | 41.75 |  |
| SIEMENS - Istraživač1 | SIEMENS | 46.25 |  |
| SIEMENS - Istraživač2 | SIEMENS | 46.25 |  |
| SIEMENS - Menadžer1 | SIEMENS | 48.12 |  |
| SIEMENS - Menadžer2 | SIEMENS | 48.12 |  |
| SIEMENS - Menadžer3 | SIEMENS | 48.12 |  |
| SIEMENS - Administrator3 | SIEMENS | 41.75 |  |
| SIEMENS - Menadžer4 | SIEMENS | 48.12 |  |
| SIEMENS - Menadžer5 | SIEMENS | 48.12 |  |
| SIEMENS - Istraživač3 | SIEMENS | 46.25 |  |
| SIEMENS - Istraživač4 | SIEMENS | 46.25 |  |
| SIEMENS - Menadžer6 | SIEMENS | 48.12 |  |
| SIEMENS - Menadžer7 | SIEMENS | 48.12 |  |
| SIEMENS - Menadžer8 | SIEMENS | 48.12 |  |
| SIEMENS - Administrator4 | SIEMENS | 41.75 |  |
| SIEMENS - Administrator5 | SIEMENS | 41.75 |  |
| Licenca za softver za statističku obradu podataka |  |  | 8964 |
| Licenca za softver za planiranje projekta |  |  | 5364 |
| Licenca za softver za modelovanje aplikacije |  |  | 2450 |
| Oprema za kodiranje |  |  | 2877 |
| Licenca za softver za testiranje |  |  | 1389 |
| Oprema za izradu prototipa hardvera |  |  | 2530 |
| Materijal za realizaciju hardvera |  |  | 10120 |
| Dodatni hardverski materijal |  |  | 2450 |
| Materijal za oglase |  |  | 10000 |
| Propusnice za konferencije |  |  | 5000 |
| Licenca za Microsoft Project |  |  | 14976 |

## Schedule

| ID | WBS | Task | Type | Duration | Start | Finish | Predecessors | Total slack | Resources | Work | Cost |
| --- | --- | --- | --- | --- | --- | --- | --- | --- | --- | --- | --- |
| 1 | 1 | **WP1 - Analiza tržišta I korisničkih zahteva** |  | 89d | 2019-05-01 | 2019-09-01 |  |  | Licenca za softver za statističku obradu podataka | 5374.4h | 247,493 |
| 2 | 1.1 | **Analiza trzista** |  | 44d | 2019-05-01 | 2019-07-01 |  | 0d |  | 2750.4h | 121,950 |
| 3 | 1.1.1 | **Iniciranje analize tržišta** |  | 8d | 2019-05-01 | 2019-05-10 |  | 0d |  | 176h | 7,505 |
| 4 | 1.1.1.1 | Izdvajanje zaposlenih za ovu fazu | manual | 3d | 2019-05-01 | 2019-05-03 |  |  | SIEMENS - Menadžer1; SIEMENS - Menadžer2 | 36h | 1,732.5 |
| 5 | 1.1.1.2 | One-page opis posla | manual | 2d | 2019-05-06 | 2019-05-07 |  |  | PHILIPS - Administrator; ETF - Administrator1; ETH - Administrator1 | 48h | 1,924 |
| 6 | 1.1.1.3 | Raspodela zaposlenih u timove | manual | 1d | 2019-05-08 | 2019-05-08 | 4, 5 |  | PHILIPS - Administrator; ETF - Administrator2; ETH - Administrator2; SIEMENS - Menadžer1 | 28h | 1,154.5 |
| 7 | 1.1.1.4 | Dokumentovanje aktivnosti | manual | 2d | 2019-05-09 | 2019-05-10 | 5, 4, 6 |  | PHILIPS - Administrator; ETF - Administrator1; ETH - Administrator1; SIEMENS - Menadžer2 | 64h | 2,694 |
| 8 | 1.1.2 | **Planiranje analize tržišta** |  | 15d | 2019-05-13 | 2019-05-31 | 3 | 0d |  | 404h | 17,870.5 |
| 9 | 1.1.2.1 | Definisanje svih zadataka koje treba uraditi unutar faze izvršavanja | manual | 3d | 2019-05-13 | 2019-05-15 |  |  | PHILIPS - Administrator; ETF - Administrator1; ETH - Administrator1; SIEMENS - Menadžer2 | 96h | 4,041 |
| 10 | 1.1.2.2 | Podela zadataka po timovima | manual | 1d | 2019-05-16 | 2019-05-16 | 9 |  | PHILIPS - Administrator; ETF - Administrator1; ETH - Administrator1; SIEMENS - Menadžer3 | 32h | 1,347 |
| 11 | 1.1.2.3 | **Priprema za analizu tržišta** |  | 9d | 2019-05-17 | 2019-05-29 |  | 0d |  | 244h | 11,124.5 |
| 12 | 1.1.2.3.1 | Pronalaženje adekvatnih izvora informacija | manual | 2d | 2019-05-17 | 2019-05-20 | 10 |  | KI - Istraživač2; ETF - Istraživač1; ETH - Istraživač1; SIEMENS - Istraživač1 | 64h | 2,960 |
| 13 | 1.1.2.3.2 | Priprema anketa za ispitanike | manual | 3d | 2019-05-17 | 2019-05-21 | 10 |  | KI - Istraživač1; ETF - Istraživač2; ETH - Istraživač2; SIEMENS - Istraživač2 | 96h | 4,440 |
| 14 | 1.1.2.3.3 | Piriprema softvera za analizu prikupljenih podataka | manual | 3d | 2019-05-22 | 2019-05-24 | 13 |  | ETF - PhDStudent1; ETF - PostDoc1 | 48h | 1,992 |
| 15 | 1.1.2.3.4 | Pronalaženje i zakazivanje sastanaka sa ispitanicima | manual | 3d | 2019-05-27 | 2019-05-29 | 14 |  | SIEMENS - Menadžer1; ETF - Menadžer1; ETH - Menadžer1 | 36h | 1,732.5 |
| 16 | 1.1.2.4 | Dokumentovanje aktivnosti | manual | 2d | 2019-05-30 | 2019-05-31 | 11, 9, 10 |  | PHILIPS - Administrator; SIEMENS - Menadžer2 | 32h | 1,358 |
| 17 | 1.1.3 | **Izvršavanje analize tržišta** |  | 20d | 2019-06-03 | 2019-06-28 | 8 | 0d |  | 730.4h | 33,737.5 |
| 18 | 1.1.3.1 | **Prikupljanje podataka** |  | 12d | 2019-06-03 | 2019-06-18 |  | 0d |  | 478.4h | 22,273 |
| 19 | 1.1.3.1.1 | Prikupljanje podataka o slicnim projektima | manual | 4d | 2019-06-03 | 2019-06-06 |  |  | KI - Istraživač1; ETF - Menadžer3; ETH - Menadžer3; ETF - Istraživač2; ETH - Istraživač2 | 140.8h | 6,596 |
| 20 | 1.1.3.1.2 | Prikupljanje podataka sa relevantnih sajtova | manual | 3d | 2019-06-07 | 2019-06-11 |  |  | KI - Istraživač2; ETF - Menadžer3; ETH - Menadžer3; ETF - Istraživač1; ETH - Istraživač1 | 105.6h | 4,947 |
| 21 | 1.1.3.1.3 | Prikupljanje podataka iz naucnih magazina | manual | 3d | 2019-06-10 | 2019-06-12 |  |  | KI - Istraživač1; ETH - Istraživač2; ETF - Istraživač2 | 72h | 3,330 |
| 22 | 1.1.3.1.4 | Intervjuisanje fokus grupa | manual | 5d | 2019-06-12 | 2019-06-18 |  |  | KI - Istraživač2; SIEMENS - Istraživač1; SIEMENS - Istraživač2; SIEMENS - Istraživač3 | 160h | 7,400 |
| 23 | 1.1.3.2 | Sumiranje i analiza dobijenih informacija i pisanje izveštaja o tržištu | manual | 5d | 2019-06-19 | 2019-06-25 | 18 |  | KI - Istraživač1; ETF - Istraživač1; ETH - Istraživač1; SIEMENS - Istraživač1 | 160h | 7,400 |
| 24 | 1.1.3.3 | Pisanje studije izvodljivosti | manual | 2d | 2019-06-26 | 2019-06-27 | 23 |  | PHILIPS - Administrator; ETF - Istraživač1; ETH - Istraživač1; KI - Istraživač1; SIEMENS - Menadžer1 | 72h | 3,193 |
| 25 | 1.1.3.4 | Dokumentovanje aktivnosti | manual | 1d | 2019-06-28 | 2019-06-28 | 18, 23, 24 |  | PHILIPS - Administrator; SIEMENS - Menadžer1; SIEMENS - Menadžer2 | 20h | 871.5 |

| ID | WBS | Task | Type | Duration | Start | Finish | Predecessors | Total slack | Constraint | Resources | Work | Cost |
| --- | --- | --- | --- | --- | --- | --- | --- | --- | --- | --- | --- | --- |
| 26 | 1.1.4 | **Monitoring i kontrola analize trzista** |  | 44d | 2019-05-01 | 2019-07-01 |  | 0d |  |  | 1424h | 62,158 |
| 27 | 1.1.4.1 | Uspostavljanje sistema za praćenje | manual | 5d | 2019-05-01 | 2019-05-07 | 3SS |  |  | ETF - PostDoc1; ETH - PostDoc1; SIEMENS - Menadžer5 | 120h | 5,625 |
| 28 | 1.1.4.2 | Pracenje napretka | manual | 20d | 2019-06-03 | 2019-06-28 | 17SS |  |  | SIEMENS - Menadžer3; SIEMENS - Menadžer4 | 320h | 15,400 |
| 29 | 1.1.4.3 | Izvestavanje o napretku | manual | 20d | 2019-06-03 | 2019-06-28 | 17SS |  |  | ETF - Administrator1; ETH - Administrator1; SIEMENS - Administrator3 | 480h | 20,040 |
| 30 | 1.1.4.4 | Otkrivanje i resavanje problema | manual | 20d | 2019-06-03 | 2019-06-28 | 17SS |  |  | ETF - Administrator2; ETH - Administrator2; SIEMENS - Administrator2 | 480h | 20,040 |
| 31 | 1.1.4.5 | Dokumentovanje aktivnosti | manual | 1d | 2019-07-01 | 2019-07-01 |  |  |  | SIEMENS - Menadžer3; ETH - Administrator1; ETF - Administrator1 | 24h | 1,053 |
| 32 | 1.1.5 | **Zavrsetak analize tržišta** |  | 1d | 2019-07-01 | 2019-07-01 | 17 | 0d |  |  | 16h | 679 |
| 33 | 1.1.5.1 | Pisanje zavrsnog izvestaja | manual | 1d | 2019-07-01 | 2019-07-01 |  |  |  | PHILIPS - Administrator; SIEMENS - Menadžer4 | 16h | 679 |
| 34 | 1.2 | **Analiza korisnickih zahteva** |  | 44d | 2019-07-01 | 2019-08-29 |  | 0d |  |  | 2612h | 116,092.5 |
| 35 | 1.2.1 | **Iniciranje analize korisnickih zahteva** |  | 8d | 2019-07-01 | 2019-07-10 |  | 0d |  |  | 176h | 7,505 |
| 36 | 1.2.1.1 | Izdvajanje zaposlenih za ovu fazu | manual | 3d | 2019-07-01 | 2019-07-03 |  |  |  | SIEMENS - Menadžer1; SIEMENS - Menadžer2 | 36h | 1,732.5 |
| 37 | 1.2.1.2 | One-page opis posla | manual | 2d | 2019-07-04 | 2019-07-05 |  |  | start no earlier than 2019-07-04 | PHILIPS - Administrator; ETF - Administrator1; ETH - Administrator1 | 48h | 1,924 |
| 38 | 1.2.1.3 | Raspodela zaposlenih u timove | manual | 1d | 2019-07-08 | 2019-07-08 | 36, 37 |  |  | PHILIPS - Administrator; ETF - Administrator2; ETH - Administrator2; SIEMENS - Menadžer1 | 28h | 1,154.5 |
| 39 | 1.2.1.4 | Dokumentovanje aktivnosti | manual | 2d | 2019-07-09 | 2019-07-10 | 36, 37, 38 |  |  | PHILIPS - Administrator; ETF - Administrator1; ETH - Administrator1; SIEMENS - Menadžer2 | 64h | 2,694 |
| 40 | 1.2.2 | **Planiranje analize korisnickih zahteva** |  | 16d | 2019-07-11 | 2019-08-01 |  | 0d |  |  | 352h | 15,488 |
| 41 | 1.2.2.1 | Definisanje svih zadataka koje treba uraditi unutar faze izvršavanja | manual | 3d | 2019-07-11 | 2019-07-15 |  |  |  | PHILIPS - Administrator; ETF - Administrator1; ETH - Administrator1; SIEMENS - Menadžer2 | 96h | 4,041 |
| 42 | 1.2.2.2 | Podela zadataka po timovima | manual | 1d | 2019-07-16 | 2019-07-16 | 41 |  |  | PHILIPS - Administrator; ETF - Administrator1; ETH - Administrator1; SIEMENS - Menadžer3 | 32h | 1,347 |
| 43 | 1.2.2.3 | **Priprema za analizu korisničkih zahteva** |  | 10d | 2019-07-17 | 2019-07-30 |  | 0d |  |  | 192h | 8,742 |
| 44 | 1.2.2.3.1 | Priprema anketa za ispitanike | manual | 3d | 2019-07-17 | 2019-07-19 | 42 |  |  | KI - Istraživač1; ETF - Istraživač2; ETH - Istraživač2; SIEMENS - Istraživač2 | 96h | 4,440 |
| 45 | 1.2.2.3.2 | Piriprema softvera za analizu prikupljenih podataka | manual | 3d | 2019-07-22 | 2019-07-24 | 44 |  |  | ETF - PhDStudent1; ETF - PostDoc1 | 48h | 1,992 |
| 46 | 1.2.2.3.3 | Pronalaženje i zakazivanje sastanaka sa ispitanicima | manual | 4d | 2019-07-25 | 2019-07-30 | 45 |  |  | SIEMENS - Menadžer1; ETF - Menadžer1; ETH - Menadžer1 | 48h | 2,310 |
| 47 | 1.2.2.4 | Dokumentovanje aktivnosti | manual | 2d | 2019-07-31 | 2019-08-01 | 43 |  |  | PHILIPS - Administrator; SIEMENS - Menadžer2 | 32h | 1,358 |
| 48 | 1.2.3 | **Izvršavanje analize korisničkih zahteva** |  | 19d | 2019-08-02 | 2019-08-28 | 40 | 0d |  |  | 708h | 33,036.5 |
| 49 | 1.2.3.1 | Formiranje fokus grupa | manual | 2d | 2019-08-02 | 2019-08-05 |  |  |  | KI - Istraživač1; ETF - Menadžer3; ETH - Menadžer3; ETF - Istraživač2; ETH - Istraživač2 | 70.4h | 3,298 |
| 50 | 1.2.3.2 | Intevjuisanje fokus grupa | manual | 3d | 2019-08-06 | 2019-08-08 | 49 |  |  | KI - Istraživač1; ETF - Menadžer3; ETH - Menadžer3; ETF - Istraživač2; ETH - Istraživač2 | 105.6h | 4,947 |
| 51 | 1.2.3.3 | Izdvajanje korisnika za individualne intervjue | manual | 2d | 2019-08-08 | 2019-08-09 |  |  |  | KI - Istraživač2; ETF - Istraživač1; ETH - Istraživač1; ETF - Menadžer2; ETH - Menadžer2 | 80h | 3,760 |
| 52 | 1.2.3.4 | Individualna intervjuisanja | manual | 3d | 2019-08-12 | 2019-08-14 | 51 |  |  | KI - Istraživač2; ETF - Istraživač1; ETH - Istraživač1; ETF - Menadžer2; ETH - Menadžer2 | 120h | 5,640 |
| 53 | 1.2.3.5 | Dokumentovanje svih korisnickih zahteva | manual | 3d | 2019-08-15 | 2019-08-19 | 50, 52 |  |  | KI - Istraživač2; ETF - Istraživač1; ETH - Istraživač1; ETF - Menadžer2; ETH - Menadžer2 | 120h | 5,640 |
| 54 | 1.2.3.6 | Analiza funkcionalnosti | manual | 3d | 2019-08-20 | 2019-08-22 | 53 |  |  | KI - Istraživač1; ETF - Istraživač1; ETH - Istraživač1; SIEMENS - Istraživač1 | 96h | 4,440 |
| 55 | 1.2.3.7 | Pisanje scenarija slučajeva korišćenja | manual | 3d | 2019-08-23 | 2019-08-27 | 54 |  |  | KI - Istraživač1; ETF - Istraživač1; ETH - Istraživač1; SIEMENS - Istraživač1 | 96h | 4,440 |
| 56 | 1.2.3.8 | Dokumentovanje aktivnosti | manual | 1d | 2019-08-28 | 2019-08-28 | 53, 55 |  |  | PHILIPS - Administrator; SIEMENS - Menadžer1; SIEMENS - Menadžer2 | 20h | 871.5 |

| ID | WBS | Task | Type | Duration | Start | Finish | Predecessors | Total slack | Resources | Work | Cost |
| --- | --- | --- | --- | --- | --- | --- | --- | --- | --- | --- | --- |
| 57 | 1.2.4 | **Monitoring I kontrola analize korisničkih zahteva** |  | 44d | 2019-07-01 | 2019-08-29 |  | 0d |  | 1360h | 59,384 |
| 58 | 1.2.4.1 | Uspostavljanje sistema za praćenje | manual | 5d | 2019-07-01 | 2019-07-05 | 35SS |  | ETF - PostDoc1; ETH - PostDoc1; SIEMENS - Menadžer5 | 120h | 5,625 |
| 59 | 1.2.4.2 | Praćenje napretka | manual | 19d | 2019-08-02 | 2019-08-28 | 48SS |  | SIEMENS - Menadžer3; SIEMENS - Menadžer4 | 304h | 14,630 |
| 60 | 1.2.4.3 | Izvestavanje o napretku | manual | 19d | 2019-08-02 | 2019-08-28 | 48SS |  | ETF - Administrator1; ETH - Administrator1; SIEMENS - Administrator3 | 456h | 19,038 |
| 61 | 1.2.4.4 | Otkrivanje i resavanje problema | manual | 19d | 2019-08-02 | 2019-08-28 | 48SS |  | ETF - Administrator2; ETH - Administrator2; SIEMENS - Administrator2 | 456h | 19,038 |
| 62 | 1.2.4.5 | Dokumentovanje aktivnosti | manual | 1d | 2019-08-29 | 2019-08-29 |  |  | SIEMENS - Menadžer3; ETH - Administrator1; ETF - Administrator1 | 24h | 1,053 |
| 63 | 1.2.5 | **Završetak analize korisničkih zahteva** |  | 1d | 2019-08-29 | 2019-08-29 | 48 | 0d |  | 16h | 679 |
| 64 | 1.2.5.1 | Pisanje zavrsnog izvestaja | manual | 1d | 2019-08-29 | 2019-08-29 |  |  | PHILIPS - Administrator; SIEMENS - Menadžer4 | 16h | 679 |
| 65 | 1.3 | Dobijanje odobrenja od višeg menadžmenta | manual | 1d | 2019-08-30 | 2019-08-30 | 2, 34 |  | PHILIPS - Administrator; KI - Menadžer1 | 12h | 486.5 |
| 66 | 2 | Dokumentovana analiza tržišta i korisničkih zahteva | milestone, manual | 0d | 2019-09-02 | 2019-09-02 | 1 |  |  |  |  |
| 67 | 3 | **WP2 - Planiranje projekta** |  | 66d | 2019-09-02 | 2019-12-01 | 1 |  | Licenca za softver za statističku obradu podataka | 1212.56h | 63,751.45 |
| 68 | 3.1 | **Formiranje rasporeda za realizaciju projekta** |  | 20d | 2019-09-02 | 2019-09-27 |  | 0d |  | 428h | 19,437.5 |
| 69 | 3.1.1 | Definisati sve potrebne zadatke u realizaciji projekta | manual | 10d | 2019-09-02 | 2019-09-13 |  |  | UC - Menadžer; ETF - Menadžer1; ETH - Administrator1; ETH - Menadžer1 | 200h | 9,045 |
| 70 | 3.1.2 | Proceniti trajanje projektnih faza | manual | 5d | 2019-09-16 | 2019-09-20 | 69 |  | UC - Menadžer; ETF - Menadžer2; ETH - Administrator2; ETH - Menadžer2 | 120h | 5,485 |
| 71 | 3.1.3 | Definisati raspored izvršavanja | manual | 5d | 2019-09-23 | 2019-09-27 | 69, 70 |  | UC - Menadžer; ETF - Menadžer1; ETH - Administrator2; ETH - Menadžer3 | 108h | 4,907.5 |
| 72 | 3.2 | **Planiranje resursa** |  | 15d | 2019-09-30 | 2019-10-18 | 68 | 0d |  | 276h | 12,162.5 |
| 73 | 3.2.1 | Definisanje broja potrebnog osoblja | manual | 5d | 2019-09-30 | 2019-10-04 |  |  | ETF - Menadžer2; ETH - Administrator2; UC - Menadžer | 100h | 4,522.5 |
| 74 | 3.2.2 | Definisanje zahteva za opremom | manual | 10d | 2019-10-07 | 2019-10-18 |  |  | ETF - Menadžer3; ETH - Administrator1; UC - Tehničar | 176h | 7,640 |
| 75 | 3.3 | **Planiranje budžeta** |  | 20d | 2019-10-21 | 2019-11-15 | 72 | 0d |  | 289.6h | 13,107 |
| 76 | 3.3.1 | Definisanje plata zaposlenih | manual | 5d | 2019-10-21 | 2019-10-25 |  |  | ETF - Administrator1; ETF - Menadžer1; ETH - Menadžer2 | 80h | 3,595 |
| 77 | 3.3.2 | Definisanje troškova za opremu | manual | 10d | 2019-10-28 | 2019-11-08 |  |  | ETF - Menadžer1; ETH - Menadžer1; UC - Tehničar | 120h | 5,455 |
| 78 | 3.3.3 | Definisanje ostalih troškova | manual | 3d | 2019-11-11 | 2019-11-13 |  |  | ETF - Menadžer3; ETH - Administrator2; ETH - Menadžer3 | 57.6h | 2,619 |
| 79 | 3.3.4 | Sumiranje troškova | manual | 2d | 2019-11-14 | 2019-11-15 |  |  | ETF - Administrator1; ETF - Menadžer1; ETH - Menadžer1 | 32h | 1,438 |
| 80 | 3.4 | Raspodela posla po participantima | manual | 3d | 2019-11-18 | 2019-11-20 | 68 |  | UC - Menadžer; ETF - Menadžer1; ETH - Menadžer1; ETH - Menadžer2 | 48h | 2,289 |
| 81 | 3.5 | Planiranje rizika | manual | 3d | 2019-11-21 | 2019-11-25 | 68 |  | ETF - Menadžer2; ETF - Menadžer3; ETH - Menadžer3 | 54.96h | 2,644.95 |
| 82 | 3.6 | Dokumentovati projektni plan | manual | 3d | 2019-11-26 | 2019-11-28 | 68, 72, 75, 81 |  | UC - Menadžer; ETF - Administrator1; ETF - Menadžer1; ETH - Administrator1; ETH - Menadžer1 | 84h | 3,715.5 |
| 83 | 3.7 | Dobijanje odobrenja od višeg menadžmenta | manual | 1d | 2019-11-29 | 2019-11-29 | 82 |  | UC - Menadžer; ETF - Administrator2; ETF - Menadžer2; ETH - Administrator2; ETH - Menadžer2 | 32h | 1,431 |
| 84 | 4 | Izrađen projektni plan | milestone, manual | 0d | 2019-12-02 | 2019-12-02 | 67 |  |  |  |  |

| ID | WBS | Task | Type | Duration | Start | Finish | Predecessors | Total slack | Resources | Work | Cost |
| --- | --- | --- | --- | --- | --- | --- | --- | --- | --- | --- | --- |
| 85 | 5 | **WP3 - Modelovanje arhitekture i dizajn sistema** |  | 110d | 2019-12-02 | 2020-05-01 | 67 |  | Licenca za softver za modelovanje aplikacije | 7208h | 303,370 |
| 86 | 5.1 | **Modelovanje I dizajn veb-portala** |  | 53d | 2019-12-02 | 2020-02-12 |  | 0d |  | 3088h | 129,217 |
| 87 | 5.1.1 | Dizajniranje izgleda veb-portala | manual | 30d | 2019-12-02 | 2020-01-10 |  |  | UC - PhDStudent1; UC - PostDoc2; ETF - PhDStudent1; ETF - PostDoc1; ETH - PhDStudent1; ETH - PostDoc1; SIEMENS - Istraživač1 | 1680h | 70,500 |
| 88 | 5.1.2 | UML projektovanje veb-portala | manual | 19d | 2020-01-13 | 2020-02-06 |  |  | UC - PhDStudent1; UC - PostDoc2; UC - Tehničar; ETF - PhDStudent2; ETF - PostDoc2; ETH - PhDStudent2; ETH - PostDoc2; SIEMENS - Istraživač2 | 1216h | 50,749 |
| 89 | 5.1.3 | Dokumentovanje dizajna veb-portala | manual | 4d | 2020-02-07 | 2020-02-12 |  |  | UC - PhDStudent1; ETF - PhDStudent3; ETF - PostDoc3; ETH - PhDStudent3; ETH - PostDoc3; SIEMENS - Istraživač3 | 192h | 7,968 |
| 90 | 5.2 | **Modelovanje I dizajn hardvera** |  | 53d | 2020-02-13 | 2020-04-27 |  | 0d |  | 4000h | 167,065 |
| 91 | 5.2.1 | Dizajniranje hardvera | manual | 30d | 2020-02-13 | 2020-03-25 |  |  | UC - PhDStudent1; UC - PostDoc2; ETF - PhDStudent1; ETF - PostDoc1; ETH - PhDStudent1; ETH - PostDoc1; SIEMENS - Istraživač1 | 1680h | 70,500 |
| 92 | 5.2.2 | UML projektovanje hardvera | manual | 19d | 2020-03-26 | 2020-04-21 |  |  | UC - PhDStudent2; UC - PostDoc2; UC - Tehničar; ETF - PhDStudent2; ETF - PostDoc2; ETH - PhDStudent2; ETH - PostDoc2; SIEMENS - Istraživač2 | 1216h | 50,749 |
| 93 | 5.2.3 | Izrada fizičkog mini modela hardvera | manual | 23d | 2020-03-26 | 2020-04-27 |  |  | UC - PhDStudent1; ETF - PhDStudent3; ETF - PostDoc3; ETH - PhDStudent3; ETH - PostDoc3; SIEMENS - Istraživač3 | 1104h | 45,816 |
| 94 | 5.3 | Dokumentovanje modelovanja I dizajniranja sistema | manual | 3d | 2020-04-28 | 2020-04-30 | 86, 90 |  | UC - PhDStudent1; UC - PhDStudent2; ETF - PhDStudent1; ETH - PhDStudent2; SIEMENS - Istraživač4 | 120h | 4,638 |
| 95 | 6 | Završeno modelovanje i dizajn sistema | milestone, manual | 0d | 2020-05-02 | 2020-05-02 | 85 |  |  |  |  |
| 96 | 7 | **WP4 - Izrada prototipa veb-portala i prototipa hardvera** |  | 66d | 2020-05-04 | 2020-08-01 | 85, 67 |  | Oprema za kodiranje; Oprema za izradu prototipa hardvera | 6160h | 273,166 |
| 97 | 7.1 | **Izrada prototipa veb-portala** |  | 24d | 2020-05-04 | 2020-06-04 |  | 0d |  | 2080h | 90,832 |
| 98 | 7.1.1 | Izrada stranica za korisnike, službenike I administratore | manual | 20d | 2020-05-04 | 2020-05-29 |  |  | UC - PostDoc2; UC - Tehničar; ETF - Istraživač1; ETF - PhDStudent1; ETF - PostDoc1; ETH - Istraživač1; ETH - Istraživač2; ETH - PhDStudent1; ETH - PostDoc1; SIEMENS - Istraživač1; SIEMENS - Istraživač2 | 1760h | 77,140 |
| 99 | 7.1.2 | Validacija prototipa veb-portala | manual | 4d | 2020-06-01 | 2020-06-04 |  |  | UC - Tehničar; ETF - Istraživač2; ETF - PhDStudent2; ETF - PostDoc2; ETH - Istraživač2; ETH - PhDStudent2; ETH - PhDStudent3; ETH - PostDoc3; SIEMENS - Istraživač3; SIEMENS - Istraživač4 | 320h | 13,692 |
| 100 | 7.2 | **Izrada prototipa hardvera** |  | 41d | 2020-06-05 | 2020-07-31 |  | 0d |  | 4080h | 176,927 |
| 101 | 7.2.1 | Izrada prototipa hardvera | manual | 20d | 2020-06-05 | 2020-07-02 |  |  | UC - PostDoc2; UC - Tehničar; ETF - Istraživač1; ETF - PhDStudent2; ETF - PostDoc2; ETF - PostDoc3; ETH - Istraživač2; ETH - PhDStudent1; ETH - PhDStudent2; ETH - PostDoc2; ETH - PostDoc3; SIEMENS - Istraživač2; SIEMENS - Istraživač3; SIEMENS - Istraživač4 | 2240h | 97,820 |
| 102 | 7.2.2 | Izrada interfejsa prema softverskoj komponenti | manual | 11d | 2020-07-03 | 2020-07-17 |  |  | UC - PostDoc2; UC - Tehničar; ETF - Istraživač1; ETF - PhDStudent1; ETF - PostDoc1; ETH - Istraživač1; ETH - PhDStudent1; ETH - PostDoc1; SIEMENS - Istraživač1; SIEMENS - Istraživač2 | 880h | 38,357 |
| 103 | 7.2.3 | Izrada grafičkog korisničkog interfejsa | manual | 10d | 2020-07-20 | 2020-07-31 |  |  | UC - PostDoc2; UC - Tehničar; ETF - Istraživač2; ETF - PhDStudent2; ETF - PhDStudent3; ETF - PostDoc3; ETH - Istraživač2; ETH - PhDStudent1; ETH - PhDStudent2; ETH - PostDoc3; SIEMENS - Istraživač1; SIEMENS - Istraživač2 | 960h | 40,750 |
| 104 | 8 | Izrađen prototip oba dela sistema | milestone, manual | 0d | 2020-08-03 | 2020-08-03 | 96 |  |  |  |  |
| 105 | 9 | **WP5 - Implementacija veb-portala i hardvera** |  | 174d | 2020-08-03 | 2021-04-01 | 96 |  | Materijal za realizaciju hardvera | 13784h | 600,761 |
| 106 | 9.1 | **Implementacija veb-portala** |  | 80d | 2020-08-03 | 2020-11-20 |  | 0d |  | 6720h | 288,560 |
| 107 | 9.1.1 | Forntend implementacija | manual | 35d | 2020-08-03 | 2020-09-18 |  |  | UC - PhDStudent1; UC - PostDoc1; UC - Tehničar; ETF - Istraživač1; ETF - PhDStudent1; ETF - PostDoc1; ETH - Istraživač1; ETH - PhDStudent1; ETH - PostDoc1; SIEMENS - Istraživač1; SIEMENS - Istraživač2 | 3080h | 132,335 |
| 108 | 9.1.2 | Backend implementacija | manual | 35d | 2020-09-21 | 2020-11-06 |  |  | UC - PhDStudent1; UC - PostDoc1; UC - Tehničar; ETF - Istraživač2; ETF - PhDStudent2; ETF - PostDoc2; ETH - Istraživač2; ETH - PhDStudent2; ETH - PostDoc2; SIEMENS - Istraživač3; SIEMENS - Istraživač4 | 3080h | 132,335 |
| 109 | 9.1.3 | Integracija ovih delova | manual | 10d | 2020-11-09 | 2020-11-20 | 107, 108 |  | UC - Tehničar; ETF - PhDStudent3; ETF - PostDoc3; ETH - PhDStudent3; ETH - PostDoc3; SIEMENS - Istraživač2; SIEMENS - Istraživač4 | 560h | 23,890 |

| ID | WBS | Task | Type | Duration | Start | Finish | Predecessors | Total slack | Resources | Work | Cost |
| --- | --- | --- | --- | --- | --- | --- | --- | --- | --- | --- | --- |
| 110 | 9.2 | **Implementacija hardvera** |  | 85d | 2020-11-23 | 2021-03-19 |  | 0d |  | 6680h | 286,145 |
| 111 | 9.2.1 | Implementacija pojedinacnih delova hardvera | manual | 65d | 2020-11-23 | 2021-02-19 |  |  | UC - PhDStudent1; UC - PostDoc1; UC - Tehničar; ETF - Istraživač2; ETF - PhDStudent3; ETF - PostDoc3; ETH - Istraživač1; ETH - PhDStudent2; ETH - PostDoc2; SIEMENS - Istraživač1; SIEMENS - Istraživač4 | 5720h | 245,765 |
| 112 | 9.2.2 | Integracija svih delova hardvera | manual | 20d | 2021-02-22 | 2021-03-19 | 111 |  | UC - Tehničar; ETF - PhDStudent1; ETF - PostDoc1; ETH - PhDStudent1; ETH - PostDoc1; SIEMENS - Istraživač2 | 960h | 40,380 |
| 113 | 9.3 | Kreiranje korisničkog uputstva | manual | 8d | 2021-03-22 | 2021-03-31 | 106, 110 |  | UC - PhDStudent1; ETF - PhDStudent3; ETF - PostDoc3; ETH - PhDStudent3; ETH - PostDoc3; SIEMENS - Istraživač1 | 384h | 15,936 |
| 114 | 10 | Implementirana oba dela sistema | milestone, manual | 0d | 2021-04-02 | 2021-04-02 | 105 |  |  |  |  |
| 115 | 11 | **WP6 - Testiranje veb-portala i hardvera** |  | 131d | 2021-04-02 | 2021-10-01 | 105 |  | Licenca za softver za testiranje | 7120h | 300,000 |
| 116 | 11.1 | **Testiranje veb-portala** |  | 64d | 2021-04-02 | 2021-06-30 |  | 0d |  | 3480h | 145,463 |
| 117 | 11.1.1 | Izrada testova | manual | 10d | 2021-04-02 | 2021-04-15 |  |  | PHILIPS - PhDStudent1; PHILIPS - PostDoc1; PHILIPS - PostDoc2; PHILIPS - Tehničar1; ETF - Istraživač1; ETH - Istraživač1; SIEMENS - Istraživač1; SIEMENS - Istraživač2 | 600h | 26,505 |
| 118 | 11.1.2 | Pokretanje testova | manual | 20d | 2021-04-16 | 2021-05-13 | 117 |  | PHILIPS - Tehničar1; ETF - Istraživač2; ETH - Istraživač2; SIEMENS - Istraživač2; SIEMENS - Istraživač3 | 720h | 32,810 |
| 119 | 11.1.3 | Ispravljanje pronađenih defekata | manual | 25d | 2021-05-14 | 2021-06-17 | 118 |  | PHILIPS - PhDStudent1; PHILIPS - PhDStudent2; PHILIPS - PostDoc1; ETF - PhDStudent1; ETF - PhDStudent2; ETF - PostDoc2; ETH - PhDStudent1; ETH - PhDStudent2; ETH - PostDoc2 | 1800h | 71,550 |
| 120 | 11.1.4 | Kreiranje izveštaja | manual | 9d | 2021-06-18 | 2021-06-30 | 117, 118, 119 |  | PHILIPS - PhDStudent1; ETF - PhDStudent3; ETH - PhDStudent3; ETF - Istraživač1; ETH - Istraživač1 | 360h | 14,598 |
| 121 | 11.2 | **Testiranje hardvera** |  | 63d | 2021-07-01 | 2021-09-27 |  | 0d |  | 3448h | 145,636 |
| 122 | 11.2.1 | Izrada testova | manual | 10d | 2021-07-01 | 2021-07-14 |  |  | PHILIPS - PhDStudent1; PHILIPS - PhDStudent2; PHILIPS - PostDoc2; PHILIPS - Tehničar2; ETF - Istraživač2; ETH - Istraživač2; SIEMENS - Istraživač1; SIEMENS - Istraživač2 | 640h | 27,470 |
| 123 | 11.2.2 | Pokretanje testova | manual | 20d | 2021-07-15 | 2021-08-11 | 122 |  | PHILIPS - Tehničar2; ETF - Istraživač1; ETF - PhDStudent3; ETF - PostDoc3; ETH - Istraživač1; ETH - PhDStudent3; ETH - PostDoc3; PHILIPS - PhDStudent2; PHILIPS - PostDoc2; SIEMENS - Istraživač3; SIEMENS - Istraživač4 | 1760h | 75,620 |
| 124 | 11.2.3 | Ispravljanje pronađenih defekata | manual | 25d | 2021-08-12 | 2021-09-15 | 123 |  | PHILIPS - PhDStudent1; PHILIPS - PhDStudent2; PHILIPS - PostDoc2 | 600h | 23,650 |
| 125 | 11.2.4 | Kreiranje izveštaja | manual | 8d | 2021-09-16 | 2021-09-27 | 122, 123, 124 |  | PHILIPS - PhDStudent2; ETF - Istraživač1; ETF - PhDStudent1; ETH - Istraživač1; ETH - PhDStudent1; SIEMENS - Istraživač3; SIEMENS - Istraživač4 | 448h | 18,896 |
| 126 | 11.3 | Kreiranje konačnog izveštaja o testiranju | manual | 3d | 2021-09-28 | 2021-09-30 | 116, 121 |  | PHILIPS - PhDStudent1; PHILIPS - PhDStudent2; ETF - PhDStudent1; ETF - PhDStudent2; ETH - PhDStudent1; ETH - PhDStudent2; SIEMENS - Istraživač1; SIEMENS - Istraživač2 | 192h | 7,512 |
| 127 | 12 | Testirani delovi sistema | milestone, manual | 0d | 2021-10-04 | 2021-10-04 | 115 |  |  |  |  |
| 128 | 13 | **WP7 - Integracija hardvera i softvera** |  | 65d | 2021-10-04 | 2021-12-31 | 115, 105 |  | Dodatni hardverski materijal | 10600h | 449,230 |
| 129 | 13.1 | Integracija sistema | manual | 60d | 2021-10-04 | 2021-12-24 |  |  | PHILIPS - PhDStudent1; PHILIPS - PhDStudent2; PHILIPS - PostDoc1; PHILIPS - PostDoc2; PHILIPS - Tehničar1; PHILIPS - Tehničar2; ETF - PhDStudent1; ETF - PhDStudent2; ETF - PhDStudent3; ETF - PostDoc1; ETF - PostDoc2; ETF - PostDoc3; ETH - PhDStudent1; ETH - PhDStudent2; ETH - PhDStudent3; ETH - PostDoc1; ETH - PostDoc2; ETH - PostDoc3; SIEMENS - Istraživač1; SIEMENS - Istraživač2; SIEMENS - Istraživač3; SIEMENS - Istraživač4 | 10320h | 434,970 |
| 130 | 13.2 | Dokumentovanje integracije sistema | manual | 5d | 2021-12-27 | 2021-12-31 | 129 |  | PHILIPS - PhDStudent1; ETF - PhDStudent1; ETF - PostDoc1; ETH - Istraživač2; ETH - PhDStudent2; SIEMENS - Istraživač3; SIEMENS - Istraživač4 | 280h | 11,810 |
| 131 | 14 | Integrisan sistem | manual | 1d | 2022-01-03 | 2022-01-03 | 128 |  |  |  |  |
| 132 | 15 | **WP8 - Integraciono testiranje** |  | 86d | 2022-01-03 | 2022-05-01 | 128 |  |  | 5840h | 257,180 |
| 133 | 15.1 | Izrada testova | manual | 20d | 2022-01-03 | 2022-01-28 |  |  | ETF - Istraživač1; ETF - PhDStudent1; ETF - PostDoc1; ETH - Istraživač1; ETH - PhDStudent1; ETH - PostDoc1; SIEMENS - Istraživač1; SIEMENS - Istraživač2 | 1280h | 56,160 |
| 134 | 15.2 | Pokretanje testova | manual | 30d | 2022-01-31 | 2022-03-11 | 133 |  | ETF - Istraživač2; ETF - PhDStudent2; ETF - PostDoc2; ETH - Istraživač2; ETH - PhDStudent2; ETH - PostDoc2; SIEMENS - Istraživač3; SIEMENS - Istraživač4 | 1920h | 84,240 |
| 135 | 15.3 | Ispravljanje pronađenih defekata | manual | 30d | 2022-03-14 | 2022-04-22 | 134 |  | ETF - Istraživač1; ETF - Istraživač2; ETF - PhDStudent3; ETF - PostDoc3; ETH - Istraživač1; ETH - Istraživač2; ETH - PhDStudent3; ETH - PostDoc3; SIEMENS - Istraživač2; SIEMENS - Istraživač4 | 2400h | 106,440 |
| 136 | 15.4 | Kreiranje izveštaja | manual | 5d | 2022-04-25 | 2022-04-29 | 133, 134, 135 |  | ETF - PhDStudent2; ETF - PostDoc3; ETH - PhDStudent1; ETH - PostDoc1; SIEMENS - Istraživač1; SIEMENS - Istraživač3 | 240h | 10,340 |
| 137 | 16 | Testiran sistem | milestone, manual | 0d | 2022-05-02 | 2022-05-02 | 132 |  |  |  |  |

| ID | WBS | Task | Type | Duration | Start | Finish | Predecessors | Total slack | Constraint | Resources | Work | Cost |
| --- | --- | --- | --- | --- | --- | --- | --- | --- | --- | --- | --- | --- |
| 138 | 17 | **WP9 - Evaluacija i disiminacija** |  | 45d | 2022-03-01 | 2022-05-01 | 128 |  |  | Materijal za oglase; Propusnice za konferencije | 3533h | 171,601.25 |
| 139 | 17.1 | Prikupljanje utisaka korisnika | manual | 15d | 2022-03-01 | 2022-03-21 |  |  |  | KI - Istraživač1; KI - Istraživač2; PHILIPS - Istraživač; PHILIPS - PhDStudent1; PHILIPS - PhDStudent2; SIEMENS - Administrator1; SIEMENS - Administrator2; SIEMENS - Menadžer1; SIEMENS - Menadžer2 | 1020h | 43,972.5 |
| 140 | 17.2 | Kreiranje markentiškog plana | manual | 5d | 2022-03-22 | 2022-03-28 | 139 |  |  | KI - Administrator1; KI - Administrator2; KI - Menadžer1; KI - Menadžer2; KI - PostDoc; PHILIPS - PostDoc2; SIEMENS - Administrator2; SIEMENS - Administrator3; SIEMENS - Menadžer3 | 313h | 13,928.75 |
| 141 | 17.3 | **Promovisanje proizvoda** |  | 25d | 2022-03-28 | 2022-04-29 | 140 | 0d |  |  | 2200h | 98,700 |
| 142 | 17.3.1 | Internet marketing | manual | 25d | 2022-03-28 | 2022-04-29 |  |  | start no earlier than 2022-03-28 | KI - Menadžer1; PHILIPS - PhDStudent1; SIEMENS - Menadžer5; SIEMENS - Menadžer2; SIEMENS - Administrator1 | 900h | 39,762.5 |
| 143 | 17.3.2 | TV marketnig | manual | 25d | 2022-03-28 | 2022-04-29 |  |  |  | KI - Menadžer2; PHILIPS - PhDStudent2; SIEMENS - Menadžer4 | 600h | 26,600 |
| 144 | 17.3.3 | Učestvovanje na sajmovima I konferencijama | manual | 25d | 2022-03-28 | 2022-04-29 |  |  |  | KI - Menadžer3; PHILIPS - Istraživač; PHILIPS - PostDoc1; SIEMENS - Menadžer1 | 700h | 32,337.5 |
| 145 | 18 | Završena evaluacija i disiminacija | milestone, manual | 0d | 2022-05-02 | 2022-05-02 | 138 |  |  |  |  |  |
| 146 | 19 | **WP10 - Upravljanje projektom** |  | 784d | 2019-05-01 | 2022-05-01 |  |  |  | Licenca za Microsoft Project | 65278.4h | 3,089,093 |
| 147 | 19.1 | Upravljanje obimom posla | manual | 154d | 2019-05-01 | 2019-12-02 |  |  |  | SIEMENS - Administrator5; SIEMENS - Menadžer7 | 2464h | 110,726 |
| 148 | 19.2 | Upravljanje vremenom | manual | 154d | 2019-05-01 | 2019-12-02 |  |  |  | SIEMENS - Administrator4; SIEMENS - Menadžer8 | 1848h | 81,081 |
| 149 | 19.3 | Uspravljanje rizicima | manual | 740d | 2019-05-01 | 2022-03-01 |  |  |  | SIEMENS - Menadžer6 | 5920h | 284,900 |
| 150 | 19.4 | Upravljanje kvalitetom | manual | 629d | 2019-12-03 | 2022-04-29 |  |  |  | PHILIPS - Tehničar1 | 4672h | 187,464 |
| 151 | 19.5 | Upravljanje rashodima | manual | 66d | 2019-09-02 | 2019-12-02 |  |  |  | UC - Tehničar | 448h | 17,976 |
| 152 | 19.6 | Upravljanje ljudskim resursima | manual | 66d | 2019-09-02 | 2019-12-02 |  |  |  | ETH - Menadžer2; KI - Menadžer2; SIEMENS - Menadžer4 | 1520h | 73,150 |
| 153 | 19.7 | Upravljanje komunikacijom | manual | 783d | 2019-05-01 | 2022-04-29 |  |  |  | SIEMENS - Menadžer8; ETF - Menadžer3; ETH - Menadžer3 | 17890.4h | 860,975.5 |
| 154 | 19.8 | **Sastanci** |  | 784d | 2019-05-01 | 2022-05-01 |  |  |  |  | 30516h | 1,457,844.5 |
| 155 | 19.8.1 | **Mesečni sastanak** |  | 783d | 2019-05-01 | 2022-05-01 |  | 0d |  | ETF - Menadžer1; ETH - Menadžer1; KI - Menadžer1; SIEMENS - Menadžer1; UC - Menadžer | 30516h | 1,457,844.5 |
| 156 | 19.8.1.1 | Mesečni sastanak 1 | manual | 1d | 2019-05-01 | 2019-05-01 |  |  | start no earlier than 2019-05-01 |  |  |  |
| 157 | 19.8.1.2 | Mesečni sastanak 2 | manual | 1d | 2019-06-01 | 2019-06-01 |  |  | start no earlier than 2019-06-01 |  |  |  |
| 158 | 19.8.1.3 | Mesečni sastanak 3 | manual | 1d | 2019-07-01 | 2019-07-01 |  |  | start no earlier than 2019-07-01 |  |  |  |
| 159 | 19.8.1.4 | Mesečni sastanak 4 | manual | 1d | 2019-08-01 | 2019-08-01 |  |  | start no earlier than 2019-08-01 |  |  |  |
| 160 | 19.8.1.5 | Mesečni sastanak 5 | manual | 1d | 2019-09-01 | 2019-09-01 |  |  | start no earlier than 2019-09-01 |  |  |  |
| 161 | 19.8.1.6 | Mesečni sastanak 6 | manual | 1d | 2019-10-01 | 2019-10-01 |  |  | start no earlier than 2019-10-01 |  |  |  |
| 162 | 19.8.1.7 | Mesečni sastanak 7 | manual | 1d | 2019-11-01 | 2019-11-01 |  |  | start no earlier than 2019-11-01 |  |  |  |
| 163 | 19.8.1.8 | Mesečni sastanak 8 | manual | 1d | 2019-12-01 | 2019-12-01 |  |  | start no earlier than 2019-12-01 |  |  |  |
| 164 | 19.8.1.9 | Mesečni sastanak 9 | manual | 1d | 2020-01-01 | 2020-01-01 |  |  | start no earlier than 2020-01-01 |  |  |  |
| 165 | 19.8.1.10 | Mesečni sastanak 10 | manual | 1d | 2020-02-01 | 2020-02-01 |  |  | start no earlier than 2020-02-01 |  |  |  |
| 166 | 19.8.1.11 | Mesečni sastanak 11 | manual | 1d | 2020-03-01 | 2020-03-01 |  |  | start no earlier than 2020-03-01 |  |  |  |
| 167 | 19.8.1.12 | Mesečni sastanak 12 | manual | 1d | 2020-04-01 | 2020-04-01 |  |  | start no earlier than 2020-04-01 |  |  |  |
| 168 | 19.8.1.13 | Mesečni sastanak 13 | manual | 1d | 2020-05-01 | 2020-05-01 |  |  | start no earlier than 2020-05-01 |  |  |  |
| 169 | 19.8.1.14 | Mesečni sastanak 14 | manual | 1d | 2020-06-01 | 2020-06-01 |  |  | start no earlier than 2020-06-01 |  |  |  |
| 170 | 19.8.1.15 | Mesečni sastanak 15 | manual | 1d | 2020-07-01 | 2020-07-01 |  |  | start no earlier than 2020-07-01 |  |  |  |
| 171 | 19.8.1.16 | Mesečni sastanak 16 | manual | 1d | 2020-08-01 | 2020-08-01 |  |  | start no earlier than 2020-08-01 |  |  |  |
| 172 | 19.8.1.17 | Mesečni sastanak 17 | manual | 1d | 2020-09-01 | 2020-09-01 |  |  | start no earlier than 2020-09-01 |  |  |  |
| 173 | 19.8.1.18 | Mesečni sastanak 18 | manual | 1d | 2020-10-01 | 2020-10-01 |  |  | start no earlier than 2020-10-01 |  |  |  |
| 174 | 19.8.1.19 | Mesečni sastanak 19 | manual | 1d | 2020-11-01 | 2020-11-01 |  |  | start no earlier than 2020-11-01 |  |  |  |
| 175 | 19.8.1.20 | Mesečni sastanak 20 | manual | 1d | 2020-12-01 | 2020-12-01 |  |  | start no earlier than 2020-12-01 |  |  |  |
| 176 | 19.8.1.21 | Mesečni sastanak 21 | manual | 1d | 2021-01-01 | 2021-01-01 |  |  | start no earlier than 2021-01-01 |  |  |  |
| 177 | 19.8.1.22 | Mesečni sastanak 22 | manual | 1d | 2021-02-01 | 2021-02-01 |  |  | start no earlier than 2021-02-01 |  |  |  |
| 178 | 19.8.1.23 | Mesečni sastanak 23 | manual | 1d | 2021-03-01 | 2021-03-01 |  |  | start no earlier than 2021-03-01 |  |  |  |
| 179 | 19.8.1.24 | Mesečni sastanak 24 | manual | 1d | 2021-04-01 | 2021-04-01 |  |  | start no earlier than 2021-04-01 |  |  |  |
| 180 | 19.8.1.25 | Mesečni sastanak 25 | manual | 1d | 2021-05-01 | 2021-05-01 |  |  | start no earlier than 2021-05-01 |  |  |  |
| 181 | 19.8.1.26 | Mesečni sastanak 26 | manual | 1d | 2021-06-01 | 2021-06-01 |  |  | start no earlier than 2021-06-01 |  |  |  |
| 182 | 19.8.1.27 | Mesečni sastanak 27 | manual | 1d | 2021-07-01 | 2021-07-01 |  |  | start no earlier than 2021-07-01 |  |  |  |
| 183 | 19.8.1.28 | Mesečni sastanak 28 | manual | 1d | 2021-08-01 | 2021-08-01 |  |  | start no earlier than 2021-08-01 |  |  |  |
| 184 | 19.8.1.29 | Mesečni sastanak 29 | manual | 1d | 2021-09-01 | 2021-09-01 |  |  | start no earlier than 2021-09-01 |  |  |  |
| 185 | 19.8.1.30 | Mesečni sastanak 30 | manual | 1d | 2021-10-01 | 2021-10-01 |  |  | start no earlier than 2021-10-01 |  |  |  |
| 186 | 19.8.1.31 | Mesečni sastanak 31 | manual | 1d | 2021-11-01 | 2021-11-01 |  |  | start no earlier than 2021-11-01 |  |  |  |
| 187 | 19.8.1.32 | Mesečni sastanak 32 | manual | 1d | 2021-12-01 | 2021-12-01 |  |  | start no earlier than 2021-12-01 |  |  |  |
| 188 | 19.8.1.33 | Mesečni sastanak 33 | manual | 1d | 2022-01-01 | 2022-01-01 |  |  | start no earlier than 2022-01-01 |  |  |  |
| 189 | 19.8.1.34 | Mesečni sastanak 34 | manual | 1d | 2022-02-01 | 2022-02-01 |  |  | start no earlier than 2022-02-01 |  |  |  |
| 190 | 19.8.1.35 | Mesečni sastanak 35 | manual | 1d | 2022-03-01 | 2022-03-01 |  |  | start no earlier than 2022-03-01 |  |  |  |
| 191 | 19.8.1.36 | Mesečni sastanak 36 | manual | 1d | 2022-04-01 | 2022-04-01 |  |  | start no earlier than 2022-04-01 |  |  |  |
| 192 | 19.8.1.37 | Mesečni sastanak 37 | manual | 1d | 2022-05-01 | 2022-05-01 |  |  | start no earlier than 2022-05-01 |  |  |  |
| 193 | 19.9 | Zatvaranje projekta | manual | 6d | 2022-04-25 | 2022-05-01 |  |  |  |  |  |  |
| 194 | 20 | Završen projekat | milestone, manual | 0d | 2021-05-01 | 2021-05-01 |  |  |  |  |  |  |
